# MIS Projketni Plan

Schedule from MS Project, 2020-05-04 to 2023-01-23.

## Calendars

- Standard: Mon-Fri 08:00-12:00, 13:00-17:00; Sat-Sun off.

## Schedule

| ID | WBS | Task | Type | Duration | Start | Finish | Predecessors | Total slack | Free slack |
| --- | --- | --- | --- | --- | --- | --- | --- | --- | --- |
| 1 | 1 | **WP1 - Analiza tržišta i korisničkih zahteva** |  | 66d | 2020-05-04 | 2020-08-03 |  | 0d |  |
| 2 | 1.1 | **Analiza tržišta** |  | 32d | 2020-05-04 | 2020-06-16 |  | 0d |  |
| 3 | 1.1.1 | **Iniciranje analize tržišta** |  | 4d | 2020-05-04 | 2020-05-07 |  | 0d |  |
| 4 | 1.1.1.1 | Selekcija ljudi koji će raditi analizu | manual | 2d | 2020-05-04 | 2020-05-05 |  |  |  |
| 5 | 1.1.1.2 | Kratak opis posla | manual | 2d | 2020-05-04 | 2020-05-05 |  |  |  |
| 6 | 1.1.1.3 | Raspodela izabranih u timove | manual | 1d | 2020-05-06 | 2020-05-06 | 4, 5 |  |  |
| 7 | 1.1.1.4 | Dokumentovanje aktivnosti | manual | 1d | 2020-05-07 | 2020-05-07 | 6 |  |  |
| 8 | 1.1.2 | **Planiranje analize tržišta** |  | 10d | 2020-05-07 | 2020-05-21 | 3 | 0d |  |
| 9 | 1.1.2.1 | Definisanje aktivnosti koje će se izvršiti u fazi realizacije | manual | 3d | 2020-05-07 | 2020-05-12 |  |  |  |
| 10 | 1.1.2.2 | Podela aktivnosti po timovima | manual | 1d | 2020-05-13 | 2020-05-13 | 9 |  |  |
| 11 | 1.1.2.3 | **Priprema za analizu tržišta** |  | 5d | 2020-05-14 | 2020-05-20 |  | 0d |  |
| 12 | 1.1.2.3.1 | Nalaženje pouzdanih izvora informacija | manual | 2d | 2020-05-14 | 2020-05-15 | 10 |  |  |
| 13 | 1.1.2.3.2 | Pravljenje anketa | manual | 3d | 2020-05-14 | 2020-05-18 | 10 |  |  |
| 14 | 1.1.2.3.3 | Instalacija i konfiguracija softvera za analizu prikupljenih podataka | manual | 2d | 2020-05-19 | 2020-05-20 | 13 |  |  |
| 15 | 1.1.2.4 | Pisanje izveštaja o planiranju analize | manual | 2d | 2020-05-20 | 2020-05-21 | 11 |  |  |
| 16 | 1.1.3 | **Realizacija analize tržišta** |  | 16d | 2020-05-22 | 2020-06-12 | 8 | 0d |  |
| 17 | 1.1.3.1 | **Prikupljanje podataka** |  | 3d | 2020-05-22 | 2020-05-26 |  | 6d | 0d |
| 18 | 1.1.3.1.1 | Prikupljanje podataka o sličnim projektima |  | 3d | 2020-05-22 | 2020-05-26 |  | 6d |  |
| 19 | 1.1.3.1.2 | Prikupljanje podataka sa odgovarajućih sajtova |  | 3d | 2020-05-22 | 2020-05-26 |  | 6d |  |
| 20 | 1.1.3.1.3 | Formiranje ciljnih grupa |  | 2d | 2020-05-22 | 2020-05-25 |  | 7d |  |
| 21 | 1.1.3.1.4 | Intervjuisanje ciljnih grupa |  | 2d | 2020-05-22 | 2020-05-25 |  | 7d |  |
| 22 | 1.1.3.2 | Analiziranje dobijenih podataka |  | 4d | 2020-05-27 | 2020-06-01 | 17 | 6d | 0d |
| 23 | 1.1.3.3 | Pisanje izveštaja o tržištu |  | 1d | 2020-06-02 | 2020-06-02 | 22 | 6d | 0d |
| 24 | 1.1.3.4 | Pisanje studije izvodljivosti |  | 2d | 2020-06-03 | 2020-06-04 | 23 | 6d |  |
| 25 | 1.1.3.5 | Praćenje napretka |  | 15d | 2020-05-22 | 2020-06-11 |  | 0d |  |
| 26 | 1.1.3.6 | Dokumentovanje aktivnosti |  | 1d | 2020-06-12 | 2020-06-12 | 25 | 0d |  |

| ID | WBS | Task | Duration | Start | Finish | Predecessors | Total slack |
| --- | --- | --- | --- | --- | --- | --- | --- |
| 27 | 1.1.4 | **Završetak analize tržišta** | 2d | 2020-06-15 | 2020-06-16 | 16 | 0d |
| 28 | 1.1.4.1 | Pisanje završnog izveštaja | 2d | 2020-06-15 | 2020-06-16 |  | 0d |
| 29 | 1.2 | **Analiza korisničkih zahteva** | 33d | 2020-06-17 | 2020-07-31 | 2 | 0d |
| 30 | 1.2.1 | **Iniciranje analize korisničkih zahteva** | 4d | 2020-06-17 | 2020-06-22 |  | 0d |
| 31 | 1.2.1.1 | Selekcija ljudi koji će raditi analizu | 2d | 2020-06-17 | 2020-06-18 |  | 0d |
| 32 | 1.2.1.2 | Kratak opis posla | 2d | 2020-06-17 | 2020-06-18 |  | 0d |
| 33 | 1.2.1.3 | Raspodela izabranih u timove | 1d | 2020-06-19 | 2020-06-19 | 31, 32 | 0d |
| 34 | 1.2.1.4 | Dokumentovanje aktivnosti | 1d | 2020-06-22 | 2020-06-22 | 33 | 0d |
| 35 | 1.2.2 | **Planiranje analize korisničkih zahteva** | 9d | 2020-06-23 | 2020-07-03 | 30 | 0d |
| 36 | 1.2.2.1 | Definisanje aktivnosti koje će se izvršiti u fazi realizacije | 3d | 2020-06-23 | 2020-06-25 | 30 | 0d |
| 37 | 1.2.2.2 | Podela aktivnosti po timovima | 1d | 2020-06-26 | 2020-06-26 | 36 | 0d |
| 38 | 1.2.2.3 | **Priprema za analizu korisničkih zahteva** | 4d | 2020-06-29 | 2020-07-02 |  | 0d |
| 39 | 1.2.2.3.1 | Pravljenje anketa | 2d | 2020-06-29 | 2020-06-30 | 37 | 0d |
| 40 | 1.2.2.3.2 | Instalacija i konfiguracija softvera za analizu prikupljenih podataka | 2d | 2020-07-01 | 2020-07-02 | 39 | 0d |
| 41 | 1.2.2.4 | Pisanje izveštaja o planiranju analize | 1d | 2020-07-03 | 2020-07-03 | 38 | 0d |
| 42 | 1.2.3 | **Realizacija analize korisničkih zahteva** | 19d | 2020-07-06 | 2020-07-30 | 35 | 0d |
| 43 | 1.2.3.1 | Formiranje ciljnih grupa | 2d | 2020-07-06 | 2020-07-07 |  | 0d |
| 44 | 1.2.3.2 | Nasumično izdvajanje ispitanika radi intervjuisanja | 1d | 2020-07-06 | 2020-07-06 |  | 1d |
| 45 | 1.2.3.3 | **Prikupljanje korisničkih zahteva** | 7d | 2020-07-08 | 2020-07-16 | 43, 44 | 0d |
| 46 | 1.2.3.3.1 | Anketiranje ciljnih grupa | 3d | 2020-07-08 | 2020-07-10 |  | 0d |
| 47 | 1.2.3.3.2 | Individualno intervjuisanje ispitanika | 2d | 2020-07-13 | 2020-07-14 | 46 | 0d |
| 48 | 1.2.3.3.3 | Formiranje spiska korisničkih zahteva | 2d | 2020-07-15 | 2020-07-16 | 47 | 0d |
| 49 | 1.2.3.4 | **Аnaliza korisničkih zahteva** | 8d | 2020-07-17 | 2020-07-28 | 45 | 0d |
| 50 | 1.2.3.4.1 | Analiza funkcionalnosti | 5d | 2020-07-17 | 2020-07-23 |  | 0d |
| 51 | 1.2.3.4.2 | Pisanje scenarija slučajeva korišćenja | 3d | 2020-07-24 | 2020-07-28 | 50 | 0d |
| 52 | 1.2.3.5 | Kreiranje izveštaja | 2d | 2020-07-29 | 2020-07-30 | 49 | 0d |
| 53 | 1.2.3.6 | Praćenje napretka | 15d | 2020-07-06 | 2020-07-24 |  | 4d |

| ID | WBS | Task | Type | Duration | Start | Finish | Predecessors | Total slack |
| --- | --- | --- | --- | --- | --- | --- | --- | --- |
| 54 | 1.2.4 | **Završetak analize korisničkih zahteva** |  | 1d | 2020-07-31 | 2020-07-31 | 42 | 0d |
| 55 | 1.2.4.1 | Pisanje završnog izveštaja |  | 1d | 2020-07-31 | 2020-07-31 |  | 0d |
| 56 | 1.3 | Dobijanje odobrenja od menadžmenta |  | 1d | 2020-08-03 | 2020-08-03 | 2, 29 | 0d |
| 57 | 2 | M1 - Završena analiza tržišta i svih korisničkih zahteva | milestone | 0d | 2020-08-03 | 2020-08-03 | 1 | 0d |
| 58 | 3 | **WP2 - Planiranje projekta** |  | 107d | 2020-08-04 | 2020-12-30 | 57 | 0d |
| 59 | 3.1 | **Pravljenje i organizacija rasporeda** |  | 27d | 2020-08-04 | 2020-09-09 |  | 0d |
| 60 | 3.1.1 | Definisanje zadataka, obima posla |  | 14d | 2020-08-04 | 2020-08-21 |  | 0d |
| 61 | 3.1.2 | Procena trajanja projektnih faza |  | 7d | 2020-08-24 | 2020-09-01 | 60 | 0d |
| 62 | 3.1.3 | Vremenski rasporediti faze, zadatke |  | 6d | 2020-09-02 | 2020-09-09 | 61 | 0d |
| 63 | 3.2 | **Planiranje resursa** |  | 17d | 2020-09-10 | 2020-10-02 | 59 | 0d |
| 64 | 3.2.1 | Određivanje broja radnika |  | 7d | 2020-09-10 | 2020-09-18 |  | 0d |
| 65 | 3.2.2 | Određivanje zahteva za opremom |  | 10d | 2020-09-21 | 2020-10-02 | 64 | 0d |
| 66 | 3.3 | **Planiranje budzeta** |  | 25d | 2020-10-05 | 2020-11-06 | 63 | 0d |
| 67 | 3.3.1 | Određivanje plata |  | 6d | 2020-10-05 | 2020-10-12 |  | 0d |
| 68 | 3.3.2 | Određivanje troškova za opremu |  | 8d | 2020-10-13 | 2020-10-22 | 67 | 0d |
| 69 | 3.3.3 | Određivanje ostalih troškova |  | 8d | 2020-10-23 | 2020-11-03 | 68 | 0d |
| 70 | 3.3.4 | Revizija i sumiranje troškova |  | 3d | 2020-11-04 | 2020-11-06 | 69 | 0d |
| 71 | 3.4 | Planiranje rizika |  | 10d | 2020-11-09 | 2020-11-20 | 66 | 0d |
| 72 | 3.5 | Raspodela posla po participantima |  | 4d | 2020-11-23 | 2020-11-26 | 71 | 0d |
| 73 | 3.6 | Definisanje načina komunikacije |  | 6d | 2020-11-27 | 2020-12-04 | 72 | 0d |
| 74 | 3.7 | Definisanje mera kvaliteta i performansi |  | 12d | 2020-12-07 | 2020-12-22 | 73 | 0d |
| 75 | 3.8 | Dokumentovati projektni plan |  | 5d | 2020-12-23 | 2020-12-29 | 74 | 0d |
| 76 | 3.9 | Dobijanje odobrenja od menadžmenta |  | 1d | 2020-12-30 | 2020-12-30 | 75 | 0d |
| 77 | 4 | M2 - Završen plan projekta | milestone | 0d | 2020-12-30 | 2020-12-30 | 76 | 0d |

| ID | WBS | Task | Type | Duration | Start | Finish | Predecessors | Total slack | Free slack |
| --- | --- | --- | --- | --- | --- | --- | --- | --- | --- |
| 78 | 5 | **WP3 - Modelovanje arhitekture i dizajn sistema** |  | 105d | 2020-12-31 | 2021-05-26 | 77 | 0d |  |
| 79 | 5.1 | **Modelovanje i dizajn veb-portala** |  | 53d | 2020-12-31 | 2021-03-15 |  | 0d |  |
| 80 | 5.1.1 | Dizajniranje izgleda |  | 30d | 2020-12-31 | 2021-02-10 |  | 0d |  |
| 81 | 5.1.2 | UML projektovanje |  | 17d | 2021-02-11 | 2021-03-05 | 80 | 0d |  |
| 82 | 5.1.3 | Dokumentovanje aktivnosti |  | 6d | 2021-03-08 | 2021-03-15 | 81 | 0d |  |
| 83 | 5.2 | **Modelovanje i dizajn hardvera** |  | 48d | 2021-03-16 | 2021-05-20 | 79 | 0d |  |
| 84 | 5.2.1 | Dizajniranje hardvera |  | 25d | 2021-03-16 | 2021-04-19 |  | 0d |  |
| 85 | 5.2.2 | UML projektovanje |  | 17d | 2021-04-20 | 2021-05-12 | 84 | 0d |  |
| 86 | 5.2.3 | Dokumentovanje aktivnosti |  | 6d | 2021-05-13 | 2021-05-20 | 85 | 0d |  |
| 87 | 5.3 | Detaljan opis dizajna i arhitekture sistema |  | 4d | 2021-05-21 | 2021-05-26 | 83 | 0d |  |
| 88 | 6 | M3 - Završeno modelovanje sistema | milestone | 0d | 2021-05-26 | 2021-05-26 | 78 | 0d |  |
| 89 | 7 | **WP4 - Izrada prototipa veb-portala** |  | 61d | 2021-05-27 | 2021-08-19 | 88 | 32d | 0d |
| 90 | 7.1 | **Izrada prototipa** |  | 41d | 2021-05-27 | 2021-07-22 |  | 32d | 0d |
| 91 | 7.1.1 | Izrada stranice za korisnike |  | 21d | 2021-05-27 | 2021-06-24 |  | 32d | 0d |
| 92 | 7.1.2 | Izrada stranica za operatere |  | 15d | 2021-06-25 | 2021-07-15 | 91 | 32d | 0d |
| 93 | 7.1.3 | Integracija stranica za korisnike i operatere |  | 5d | 2021-07-16 | 2021-07-22 | 92 | 32d |  |
| 94 | 7.2 | Validacija prototipa |  | 15d | 2021-07-23 | 2021-08-12 | 90 | 32d | 0d |
| 95 | 7.3 | Dokumentovanje aktivnosti |  | 5d | 2021-08-13 | 2021-08-19 | 94 | 32d |  |
| 96 | 8 | M4 - Završen prototip veb-portala | milestone | 0d | 2021-08-19 | 2021-08-19 | 89 | 32d | 0d |
| 97 | 9 | **WP5 - Izrada prototipa hardvera** |  | 87d | 2021-05-27 | 2021-09-24 | 88 | 0d |  |
| 98 | 9.1 | **Izrada prototipa** |  | 65d | 2021-05-27 | 2021-08-25 |  | 0d |  |
| 99 | 9.1.1 | Izrada prototipa RFID kartice |  | 30d | 2021-05-27 | 2021-07-07 |  | 0d |  |
| 100 | 9.1.2 | Izrada čitača i upisivača |  | 25d | 2021-07-08 | 2021-08-11 | 99 | 0d |  |
| 101 | 9.1.3 | Integracija prototipa sa čitačima i upisivačima |  | 10d | 2021-08-12 | 2021-08-25 | 100 | 0d |  |
| 102 | 9.2 | Validacija prototipa |  | 17d | 2021-08-26 | 2021-09-17 | 98 | 0d |  |
| 103 | 9.3 | Dokumentovanje aktivnosti |  | 5d | 2021-09-20 | 2021-09-24 | 102 | 0d |  |
| 104 | 10 | M5 - Završen prototip kartice | milestone | 0d | 2021-09-24 | 2021-09-24 | 97 | 0d |  |

| ID | WBS | Task | Type | Duration | Start | Finish | Predecessors | Total slack | Free slack |
| --- | --- | --- | --- | --- | --- | --- | --- | --- | --- |
| 105 | 11 | **WP6 - Implementacija hardvera** |  | 170d | 2021-09-27 | 2022-05-20 | 104 | 0d |  |
| 106 | 11.1 | Izrada čitača i upisivača |  | 20d | 2021-09-27 | 2021-10-22 |  | 0d |  |
| 107 | 11.2 | Izrada kartice |  | 40d | 2021-10-25 | 2021-12-17 | 106 | 0d |  |
| 108 | 11.3 | Implementacija biznis logike |  | 30d | 2021-12-20 | 2022-01-28 | 107 | 0d |  |
| 109 | 11.4 | Implementacija bezbednosnih protokola |  | 35d | 2022-01-31 | 2022-03-18 | 108 | 0d |  |
| 110 | 11.5 | **Integracija** |  | 40d | 2022-03-21 | 2022-05-13 | 109 | 0d |  |
| 111 | 11.5.1 | Integracija kartice, čitača i upisivača |  | 20d | 2022-03-21 | 2022-04-15 | 108 | 0d |  |
| 112 | 11.5.2 | Integracija kartice i sigurnosnih protokola |  | 20d | 2022-04-18 | 2022-05-13 | 111 | 0d |  |
| 113 | 11.6 | Dokumentacija svih aktivnosti |  | 5d | 2022-05-16 | 2022-05-20 | 110 | 0d |  |
| 114 | 12 | M6 - Završena implementacija kartice | milestone | 0d | 2022-05-20 | 2022-05-20 | 105 | 0d |  |
| 115 | 13 | **WP7 - Implementacija veb-portala** |  | 145d | 2021-08-20 | 2022-03-10 | 96 | 32d | 0d |
| 116 | 13.1 | Implementacija frontenda |  | 45d | 2021-08-20 | 2021-10-21 |  | 32d | 0d |
| 117 | 13.2 | Implementacija backenda |  | 45d | 2021-10-22 | 2021-12-23 | 116 | 32d | 0d |
| 118 | 13.3 | Implementacija bezbednosnih protokola |  | 35d | 2021-12-24 | 2022-02-10 | 117 | 52d |  |
| 119 | 13.4 | **Integracija** |  | 45d | 2021-12-24 | 2022-02-24 |  | 32d | 0d |
| 120 | 13.4.1 | Integracija frontenda i bekenda |  | 25d | 2021-12-24 | 2022-01-27 | 117 | 32d | 0d |
| 121 | 13.4.2 | Integracija sa bezbednosnim protokolima |  | 20d | 2022-01-28 | 2022-02-24 | 120 | 32d |  |
| 122 | 13.5 | Dokumentacija svih aktivnosti |  | 10d | 2022-02-25 | 2022-03-10 | 119 | 32d |  |
| 123 | 14 | M7 - Završena implementacija veb-portala | milestone | 0d | 2022-03-10 | 2022-03-10 | 115 | 32d | 0d |
| 124 | 15 | **WP8 - Testiranje hardvera** |  | 66d | 2022-05-23 | 2022-08-22 | 114 | 0d |  |
| 125 | 15.1 | Pisanje testova |  | 10d | 2022-05-23 | 2022-06-03 |  | 0d |  |
| 126 | 15.2 | Pokretanje testova |  | 20d | 2022-06-06 | 2022-07-01 | 125 | 0d |  |
| 127 | 15.3 | Ispravljanje pronađenih defekata |  | 30d | 2022-07-04 | 2022-08-12 | 126 | 0d |  |
| 128 | 15.4 | Kreiranje izveštaja |  | 6d | 2022-08-15 | 2022-08-22 | 127 | 0d |  |
| 129 | 16 | M8 - Završeno testiranje hardvera | milestone | 0d | 2022-08-22 | 2022-08-22 | 124 | 78d |  |

| ID | WBS | Task | Type | Duration | Start | Finish | Predecessors | Total slack | Free slack |
| --- | --- | --- | --- | --- | --- | --- | --- | --- | --- |
| 130 | 17 | **WP9 - Testiranje softvera** |  | 85d | 2022-03-11 | 2022-07-07 | 123 | 32d | 0d |
| 131 | 17.1 | Pisanje testova |  | 15d | 2022-03-11 | 2022-03-31 |  | 32d | 0d |
| 132 | 17.2 | Pokretanje testova |  | 25d | 2022-04-01 | 2022-05-05 | 131 | 32d | 0d |
| 133 | 17.3 | Ispravljanje pronađenih defekata |  | 35d | 2022-05-06 | 2022-06-23 | 132 | 32d | 0d |
| 134 | 17.4 | Kreiranje izveštaja |  | 10d | 2022-06-24 | 2022-07-07 | 133 | 32d |  |
| 135 | 18 | M9 - Završeno testiranje softvera | milestone | 0d | 2022-07-07 | 2022-07-07 | 130 | 32d |  |
| 136 | 19 | **WP10 - Evaluacija i disiminacija** |  | 110d | 2022-08-23 | 2023-01-23 | 135, 124 | 0d |  |
| 137 | 19.1 | Prikupljanje utisaka korisnika |  | 20d | 2022-08-23 | 2022-09-19 |  | 0d |  |
| 138 | 19.2 | Kreiranje marketinškog plana |  | 10d | 2022-09-20 | 2022-10-03 | 137 | 0d |  |
| 139 | 19.3 | Priprema reklamnog materijala |  | 15d | 2022-10-04 | 2022-10-24 | 138 | 0d |  |
| 140 | 19.4 | **Promovisanje proizvoda** |  | 55d | 2022-10-25 | 2023-01-09 | 139 | 0d |  |
| 141 | 19.4.1 | Internet marketing |  | 55d | 2022-10-25 | 2023-01-09 |  | 0d |  |
| 142 | 19.4.2 | TV marketing |  | 55d | 2022-10-25 | 2023-01-09 |  | 0d |  |
| 143 | 19.4.3 | Učestvovanje na sajmovima i konferencijama |  | 55d | 2022-10-25 | 2023-01-09 |  | 0d |  |
| 144 | 19.5 | Izveštaji i analizirane statistike |  | 10d | 2023-01-10 | 2023-01-23 | 140 | 0d |  |
| 145 | 20 | M10 - Završena evaluacija i disiminacija | milestone | 0d | 2023-01-23 | 2023-01-23 | 136 | 0d |  |
| 146 | 21 | **WP11 - Upravljanje projektom** |  | 711d? | 2020-05-04 | 2023-01-23 |  |  |  |
| 147 | 21.1 | Uspravljanje rizicima |  | 711d | 2020-05-04 | 2023-01-23 |  | 0d |  |
| 148 | 21.2 | Upravljanje komunikacijom |  | 711d | 2020-05-04 | 2023-01-23 |  | 0d |  |
| 149 | 21.3 | Upravljanje merama kvaliteta i postupcima |  | 711d | 2020-05-04 | 2023-01-23 |  | 0d |  |
| 150 | 21.4 | Upravljanje obimom posla |  | 173d | 2020-05-04 | 2020-12-30 | 58FF | 538d |  |
| 151 | 21.5 | Upravljanje vremenom |  | 173d | 2020-05-04 | 2020-12-30 | 58FF | 538d |  |
| 152 | 21.6 | Upravljanje rashodima |  | 107d | 2020-08-04 | 2020-12-30 | 58FF | 538d |  |
| 153 | 21.7 | Upravljanje ljudskim resursima |  | 107d | 2020-08-04 | 2020-12-30 | 58FF | 538d |  |

| ID | WBS | Task | Type | Duration | Start | Finish | Predecessors | Total slack | Constraint |
| --- | --- | --- | --- | --- | --- | --- | --- | --- | --- |
| 154 | 21.8 | **Sastanci** |  | 699d | 2020-05-04 | 2023-01-05 |  | 12d |  |
| 155 | 21.8.1 | **Mesečni sastanak** |  | 699d | 2020-05-04 | 2023-01-05 |  | 12d |  |
| 156 | 21.8.1.1 | Mesečni sastanak 1 |  | 1d | 2020-05-04 | 2020-05-04 |  | 710d | start no earlier than 2019-05-01 |
| 157 | 21.8.1.2 | Mesečni sastanak 2 |  | 1d | 2020-06-04 | 2020-06-04 |  | 687d | start no earlier than 2020-06-04 |
| 158 | 21.8.1.3 | Mesečni sastanak 3 |  | 1d | 2020-07-06 | 2020-07-06 |  | 665d | start no earlier than 2020-07-06 |
| 159 | 21.8.1.4 | Mesečni sastanak 4 |  | 1d | 2020-08-04 | 2020-08-04 |  | 644d | start no earlier than 2020-08-04 |
| 160 | 21.8.1.5 | Mesečni sastanak 5 |  | 1d | 2020-09-04 | 2020-09-04 |  | 621d | start no earlier than 2020-09-04 |
| 161 | 21.8.1.6 | Mesečni sastanak 6 |  | 1d | 2020-10-05 | 2020-10-05 |  | 600d | start no earlier than 2020-10-05 |
| 162 | 21.8.1.7 | Mesečni sastanak 7 |  | 1d | 2020-11-04 | 2020-11-04 |  | 578d | start no earlier than 2020-11-04 |
| 163 | 21.8.1.8 | Mesečni sastanak 8 |  | 1d | 2020-12-04 | 2020-12-04 |  | 556d | start no earlier than 2020-12-04 |
| 164 | 21.8.1.9 | Mesečni sastanak 9 |  | 1d | 2021-01-04 | 2021-01-04 |  | 535d | start no earlier than 2021-01-04 |
| 165 | 21.8.1.10 | Mesečni sastanak 10 |  | 1d | 2021-02-04 | 2021-02-04 |  | 512d | start no earlier than 2021-02-04 |
| 166 | 21.8.1.11 | Mesečni sastanak 11 |  | 1d | 2021-03-04 | 2021-03-04 |  | 492d | start no earlier than 2021-03-04 |
| 167 | 21.8.1.12 | Mesečni sastanak 12 |  | 1d | 2021-04-05 | 2021-04-05 |  | 470d | start no earlier than 2021-04-05 |
| 168 | 21.8.1.13 | Mesečni sastanak 13 |  | 1d | 2021-05-04 | 2021-05-04 |  | 449d | start no earlier than 2021-05-04 |
| 169 | 21.8.1.14 | Mesečni sastanak 14 |  | 1d | 2021-06-04 | 2021-06-04 |  | 426d | start no earlier than 2021-06-04 |
| 170 | 21.8.1.15 | Mesečni sastanak 15 |  | 1d | 2021-07-05 | 2021-07-05 |  | 405d | start no earlier than 2021-07-05 |
| 171 | 21.8.1.16 | Mesečni sastanak 16 |  | 1d | 2021-08-04 | 2021-08-04 |  | 383d | start no earlier than 2021-08-04 |
| 172 | 21.8.1.17 | Mesečni sastanak 17 |  | 1d | 2021-09-06 | 2021-09-06 |  | 360d | start no earlier than 2021-09-06 |
| 173 | 21.8.1.18 | Mesečni sastanak 18 |  | 1d | 2021-10-04 | 2021-10-04 |  | 340d | start no earlier than 2021-10-04 |
| 174 | 21.8.1.19 | Mesečni sastanak 19 |  | 1d | 2021-11-04 | 2021-11-04 |  | 317d | start no earlier than 2021-11-04 |
| 175 | 21.8.1.20 | Mesečni sastanak 20 |  | 1d | 2021-12-06 | 2021-12-06 |  | 295d | start no earlier than 2021-12-06 |
| 176 | 21.8.1.21 | Mesečni sastanak 21 |  | 1d | 2022-01-04 | 2022-01-04 |  | 274d | start no earlier than 2022-01-04 |
| 177 | 21.8.1.22 | Mesečni sastanak 22 |  | 1d | 2022-02-04 | 2022-02-04 |  | 251d | start no earlier than 2022-02-04 |
| 178 | 21.8.1.23 | Mesečni sastanak 23 |  | 1d | 2022-03-04 | 2022-03-04 |  | 231d | start no earlier than 2022-03-04 |
| 179 | 21.8.1.24 | Mesečni sastanak 24 |  | 1d | 2022-04-04 | 2022-04-04 |  | 210d | start no earlier than 2022-04-04 |
| 180 | 21.8.1.25 | Mesečni sastanak 25 |  | 1d | 2022-05-04 | 2022-05-04 |  | 188d | start no earlier than 2022-05-04 |
| 181 | 21.8.1.26 | Mesečni sastanak 26 |  | 1d | 2022-06-06 | 2022-06-06 |  | 165d | start no earlier than 2022-06-06 |
| 182 | 21.8.1.27 | Mesečni sastanak 27 |  | 1d | 2022-07-04 | 2022-07-04 |  | 145d | start no earlier than 2022-07-04 |
| 183 | 21.8.1.28 | Mesečni sastanak 28 |  | 1d | 2022-08-04 | 2022-08-04 |  | 122d | start no earlier than 2022-08-04 |
| 184 | 21.8.1.29 | Mesečni sastanak 29 |  | 1d | 2022-09-05 | 2022-09-05 |  | 100d | start no earlier than 2022-09-05 |
| 185 | 21.8.1.30 | Mesečni sastanak 30 |  | 1d | 2022-10-04 | 2022-10-04 |  | 79d | start no earlier than 2022-10-04 |
| 186 | 21.8.1.31 | Mesečni sastanak 31 |  | 1d | 2020-11-04 | 2020-11-04 |  | 578d | start no earlier than 2020-11-04 |
| 187 | 21.8.1.32 | Mesečni sastanak 32 |  | 1d | 2022-12-05 | 2022-12-05 |  | 35d | start no earlier than 2022-12-05 |
| 188 | 21.8.1.33 | Mesečni sastanak 33 |  | 1d | 2023-01-05 | 2023-01-05 |  | 12d | start no earlier than 2023-01-05 |
| 189 | 21.9 | Zatvaranje projekta |  | 10d | 2023-01-10 | 2023-01-23 | 136FF | 0d |  |
| 190 | 22 | M11 - Završen projekat | milestone | 0d | 2023-01-23 | 2023-01-23 | 189 | 0d |  |
